# 行动项管理模块计划

Schedule from MS Project, 2014-10-27 to 2014-12-01, A marks actual dates.
寰�杞�涓�鍥�

## Calendars

- 标准: Mon-Fri 08:00-12:00, 13:00-17:00; Sat-Sun off.

## Resources

| Resource |
| --- |
| 范嘉骅 |
| 赵耀 |
| 俞嘉栋 |

## Schedule

| ID | WBS | Task | Type | Duration | Start | Finish | Complete | Remaining | Total slack | Constraint | Resources | Work | Actual work |
| --- | --- | --- | --- | --- | --- | --- | --- | --- | --- | --- | --- | --- | --- |
| 1 | 1 | **行动项管理前端模块** |  | 26d | 2014-10-27 A | 2014-12-01 | 15% | 22.14d |  |  | 范嘉骅; 俞嘉栋; 赵耀 | 2088h | 172h |
| 2 | 1.1 | **模块主页页面** |  | 19d | 2014-10-27 A | 2014-11-20 | 24% | 14.44d |  |  | 俞嘉栋; 赵耀 | 504h | 48h |
| 3 | 1.1.1 | 待办事项汇总页面 |  | 6d? | 2014-10-27 A | 2014-11-03 A | 100% |  |  | finish no earlier than 2014-11-03 | 俞嘉栋 | 48h | 48h |
| 4 | 1.1.2 | 项目列表页面 | milestone | 19d? | 2014-10-27 | 2014-11-20 |  |  | 7d | start no earlier than 2014-10-27 | 赵耀 | 152h |  |
| 5 | 1.2 | 计划导入页面 |  | 10d? | 2014-11-07 | 2014-11-20 |  |  | 7d | start no earlier than 2014-11-07 | 赵耀 | 80h |  |
| 6 | 1.3 | 行动项单项管理页面 |  | 10d? | 2014-10-27 A | 2014-11-07 | 50% | 5d? | 16d | start no earlier than 2014-10-27 | 俞嘉栋 | 80h | 40h |
| 7 | 1.4 | 登陆页面 |  | 6d? | 2014-10-27 A | 2014-11-03 | 25% | 4.5d? | 20d | start no earlier than 2014-10-27 | 范嘉骅 | 48h | 12h |
| 8 | 1.5 | 项目管理页面 |  | 6d? | 2014-10-27 A | 2014-11-03 | 25% | 4.5d? | 20d | finish no earlier than 2014-11-03 | 范嘉骅 | 48h | 12h |
| 9 | 1.6 | 主页侧边栏组件 |  | 15d? | 2014-10-27 | 2014-11-14 |  |  | 11d | start no earlier than 2014-10-27 | 俞嘉栋 | 120h |  |
| 10 | 1.7 | 人员管理页面 |  | 14d? | 2014-11-03 | 2014-11-20 |  |  | 7d | start no earlier than 2014-11-03 | 范嘉骅; 俞嘉栋 | 224h |  |
| 11 | 1.8 | 元数据管理页面 |  | 15d? | 2014-11-04 | 2014-11-24 |  |  | 5d | finish no earlier than 2014-11-24 | 范嘉骅 | 120h |  |
| 12 | 1.9 | 模块权限管理设计 |  | 5d? | 2014-11-17 | 2014-11-21 |  |  | 6d | finish no earlier than 2014-11-21 | 范嘉骅; 俞嘉栋; 赵耀 | 120h |  |
| 13 | 1.10 | 前端与数据库连接 |  | 5d? | 2014-11-24 A | 2014-11-28 | 50% | 2.5d? | 1d | start no earlier than 2014-11-24 | 范嘉骅; 俞嘉栋; 赵耀 | 120h | 60h |
